# Food Delivery Service

Schedule from MS Project, 2023-12-04 to 2025-04-26, costs in $, A marks actual dates.
The British University in Egypt

## Calendars

- Standard: Mon-Wed 08:00-21:00; Thu 09:00-18:00; Fri off; Sat-Sun 08:00-21:00. Exceptions (off unless hours are given): 2023-12-25 to 2030-12-25 (Christmas, recurring), 2024-01-07 to 2026-01-07 (Orthodox Christmas, recurring), 2024-09-15 to 2026-09-15 (Mawlid Alnabawy, recurring).

## Resources

| Resource | Rate | Cost per use |
| --- | --- | --- |
| Business Analyst 1 | 50 |  |
| Business Analyst 2 | 50 |  |
| Business Analyst 3 | 50 |  |
| Project Manager | 150 |  |
| Stakeholder 1 | 10 |  |
| Stakeholder 2 | 5 |  |
| Stakeholder 3 | 10 |  |
| Stakeholder 4 | 20 |  |
| Zoom App |  | 50 |
| ProjectManager App | 10 | 2500 |
| HP Laptop 1 |  | 1299 |
| HP Laptop 2 |  | 1299 |
| HP Laptop 3 |  | 1299 |
| HP Laptop 4 |  | 1299 |
| HP Laptop 5 |  | 1299 |
| HP Laptop 6 |  | 1299 |
| Lawyer 1 | 90 |  |
| Lawyer 2 | 90 |  |
| Lawyer 3 | 90 |  |
| Technical Analyst 1 | 50 |  |
| Technical Analyst 2 | 50 |  |
| Technical Analyst 3 | 50 |  |
| System Analyst 1 | 70 |  |
| System Analyst 2 | 70 |  |
| System Analyst 3 | 70 |  |

## Schedule

| ID | WBS | Task | Duration | Start | Finish | Predecessors | Complete | Remaining | Baseline start | Baseline finish | Baseline duration | Total slack | Free slack | Resources | Work | Actual work | Cost | Baseline cost | Actual cost |
| --- | --- | --- | --- | --- | --- | --- | --- | --- | --- | --- | --- | --- | --- | --- | --- | --- | --- | --- | --- |
| 1 | 1 | **Food Delivery Service** | 664.52d | 2023-12-04 A | 2025-04-26 |  | 49% | 339.99d | 2023-12-04 | 2025-04-17 | 648.25d | 0d |  |  | 25030.2h | 11049.5h | 1,488,186.66 | 1,476,186.66 | 646,444.66 |
| 2 | 1.1 | **Analysis Phase** | 664.52d | 2023-12-04 A | 2025-04-26 |  | 49% | 339.99d | 2023-12-04 | 2025-04-17 | 648.25d | 0d |  |  | 25030.2h | 11049.5h | 1,488,186.66 | 1,476,186.66 | 646,444.66 |
| 3 | 1.1.1 | **Gather Requirements** | 114.25d | 2023-12-04 A | 2024-03-02 A |  | 100% |  | 2023-12-04 | 2024-03-02 | 105d |  |  |  | 3808.15h | 3808.15h | 188,389.66 | 176,389.66 | 188,389.66 |
| 4 | 1.1.1.1 | **Gather Stakeholder Requirements** | 89.25d | 2023-12-04 A | 2024-02-11 A |  | 100% |  | 2023-12-04 | 2024-02-04 | 70d |  |  |  | 1840h | 1840h | 54,000 | 42,000 | 54,000 |
| 5 | 1.1.1.1.1 | Identify Key Stakeholders | 3w | 2023-12-04 A | 2024-01-03 A |  | 100% |  | 2023-12-04 | 2023-12-18 | 2w |  |  | Project Manager | 240h | 240h | 36,000 | 24,000 | 36,000 |
| 6 | 1.1.1.1.2 | Document Stakeholder Expectations | 5w | 2024-01-03 A | 2024-02-11 A | 5 | 100% |  | 2023-12-18 | 2024-02-04 | 5w |  |  | Stakeholder 1; Stakeholder 2; Stakeholder 3; Stakeholder 4 | 1600h | 1600h | 18,000 | 18,000 | 18,000 |
| 7 | 1.1.1.2 | Conduct Surveys And Questionnaires | 6w | 2023-12-04 A | 2024-01-15 A |  | 100% |  | 2023-12-04 | 2024-01-15 | 6w |  |  | HP Laptop 1; HP Laptop 2; HP Laptop 3; HP Laptop 4; HP Laptop 5; HP Laptop 6; Business Analyst 1; Business Analyst 2 [85.3%]; Business Analyst 3 | 781.15h | 781.15h | 46,851.66 | 46,851.66 | 46,851.66 |
| 8 | 1.1.1.3 | Gather User Requirements | 4w | 2024-01-15 A | 2024-02-05 A | 7 | 100% |  | 2024-01-15 | 2024-02-05 | 4w |  |  | HP Laptop 1; HP Laptop 2; HP Laptop 3; HP Laptop 4; HP Laptop 5; HP Laptop 6; Business Analyst 1; Business Analyst 2; Business Analyst 3 | 546h | 546h | 35,094 | 35,094 | 35,094 |
| 9 | 1.1.1.4 | Gather Business Requirements | 2w | 2024-02-05 A | 2024-02-17 A | 8 | 100% |  | 2024-02-05 | 2024-02-17 | 2w |  |  | Business Analyst 1; Business Analyst 2; Business Analyst 3 | 275h | 275h | 13,750 | 13,750 | 13,750 |
| 10 | 1.1.1.5 | Conduct Document Review | 2w | 2024-02-17 A | 2024-03-02 A | 9, 8 | 100% |  | 2024-02-17 | 2024-03-02 | 2w |  |  | HP Laptop 1; HP Laptop 2; HP Laptop 3; HP Laptop 4; HP Laptop 5; HP Laptop 6; Business Analyst 1; Business Analyst 2; Business Analyst 3; Project Manager | 366h | 366h | 38,694 | 38,694 | 38,694 |
| 11 | 1.1.2 | **Create Feasibility Study** | 176.88d | 2024-02-12 A | 2024-06-24 A | 4 | 100% |  | 2024-02-04 | 2024-06-17 | 176.88d |  |  |  | 4921h | 4921h | 341,347 | 341,347 | 341,347 |
| 12 | 1.1.2.1 | **Conduct Technical Feasibility** | 80d | 2024-02-12 A | 2024-04-11 A |  | 100% |  | 2024-02-04 | 2024-04-04 | 80d |  |  |  | 2640h | 2640h | 170,400 | 170,400 | 170,400 |
| 13 | 1.1.2.1.1 | Assess Technology Requirements | 3w | 2024-02-12 A | 2024-03-05 A |  | 100% |  | 2024-02-04 | 2024-02-26 | 3w |  |  | System Analyst 1; System Analyst 2; System Analyst 3; Technical Analyst 1; Technical Analyst 2; Technical Analyst 3 | 1440h | 1440h | 86,400 | 86,400 | 86,400 |
| 14 | 1.1.2.1.2 | Evaluate Scalability | 5w | 2024-03-05 A | 2024-04-11 A | 13 | 100% |  | 2024-02-26 | 2024-04-04 | 5w |  |  | System Analyst 1; System Analyst 2; System Analyst 3 | 1200h | 1200h | 84,000 | 84,000 | 84,000 |
| 15 | 1.1.2.2 | Conduct Operational Feasibility | 3w | 2024-04-13 A | 2024-05-05 A | 14 | 100% |  | 2024-04-04 | 2024-04-27 | 3w |  |  | System Analyst 1; System Analyst 2 | 480h | 480h | 33,600 | 33,600 | 33,600 |
| 16 | 1.1.2.3 | Discuss Economic Feasibility | 3w | 2024-05-05 A | 2024-05-19 A | 15 | 100% |  | 2024-04-27 | 2024-05-11 | 3.04w |  |  | Business Analyst 1; Business Analyst 2; Business Analyst 3; HP Laptop 1; HP Laptop 2; HP Laptop 3 | 469h | 469h | 27,347 | 27,347 | 27,347 |
| 17 | 1.1.2.4 | Discuss Legal Feasibility | 3w | 2024-05-19 A | 2024-06-10 A | 16 | 100% |  | 2024-05-12 | 2024-06-03 | 3w |  |  | Lawyer 1; Lawyer 2; Lawyer 3 | 720h | 720h | 64,800 | 64,800 | 64,800 |
| 18 | 1.1.2.5 | Conduct Time Feasibility | 3w | 2024-06-10 A | 2024-06-24 A | 17 | 100% |  | 2024-06-03 | 2024-06-17 | 2.96w |  |  | Business Analyst 1; Business Analyst 2; Business Analyst 3; Project Manager | 612h | 612h | 45,200 | 45,200 | 45,200 |
| 19 | 1.1.3 | **Define Project Scope** | 155d | 2024-06-24 A | 2024-10-21 | 11 | 34% | 102.87d | 2024-06-17 | 2024-10-14 | 155.75d | 0.88d | 0d |  | 8868h | 2320.36h | 444,540 | 444,540 | 116,708 |
| 20 | 1.1.3.1 | **Define Scope Statement** | 15.75d | 2024-06-24 A | 2024-07-06 |  | 21% | 12.44d | 2024-06-17 | 2024-06-29 | 15.75d | 6.5d |  |  | 1088h | 171.07h | 49,990 | 49,990 | 7,958.5 |
| 21 | 1.1.3.1.1 | Specify Deliverables | 2.09w | 2024-06-24 A | 2024-07-06 |  | 21% | 1.65w | 2024-06-17 | 2024-06-29 | 2.01w | 6.5d | 0d | Business Analyst 1; Business Analyst 2; Project Manager; Stakeholder 1; Stakeholder 2; Stakeholder 3; Stakeholder 4; System Analyst 1; Technical Analyst 1 | 1088h | 171.07h | 49,990 | 49,990 | 7,958.5 |
| 22 | 1.1.3.2 | State Scope Boundaries | 5.79w | 2024-07-06 A | 2024-08-07 | 21 | 23% | 4.46w | 2024-06-29 | 2024-07-30 | 5.79w | 11.88d | 0d | Business Analyst 1; Project Manager; Stakeholder 2; Stakeholder 3; Stakeholder 4; System Analyst 1; Technical Analyst 1 | 2256h | 418.49h | 114,480 | 114,480 | 21,184.5 |
| 23 | 1.1.3.3 | Verify Scope | 5w | 2024-08-07 A | 2024-08-24 | 22 | 57% | 2.15w | 2024-07-30 | 2024-08-16 | 5w | 3.25d | 0d | Business Analyst 1; Project Manager; Stakeholder 2; Stakeholder 3; Stakeholder 4; System Analyst 1; Technical Analyst 1 | 1390h | 798h | 70,325 | 70,325 | 40,375 |
| 24 | 1.1.3.4 | Specify Target Regions | 5w | 2024-08-24 A | 2024-09-18 | 23 | 13% | 4.35w | 2024-08-16 | 2024-09-10 | 5.16w | 10.5d | 0d | Business Analyst 1; Project Manager; Stakeholder 2; Stakeholder 3; Stakeholder 4; System Analyst 1; Technical Analyst 1 | 1878h | 208h | 95,265 | 95,265 | 10,530 |
| 25 | 1.1.3.5 | Identify Delivery Zones | 6w | 2024-09-18 A | 2024-10-21 | 24 | 46% | 3.24w | 2024-09-10 | 2024-10-14 | 6.15w | 0.88d |  | Business Analyst 1; Project Manager; Stakeholder 2; Stakeholder 3; Stakeholder 4; System Analyst 1; Technical Analyst 1 | 2256h | 724.8h | 114,480 | 114,480 | 36,660 |

| ID | WBS | Task | Type | Duration | Start | Finish | Predecessors | Complete | Remaining | Baseline start | Baseline finish | Baseline duration | Total slack | Free slack | Resources | Work | Cost | Baseline cost |
| --- | --- | --- | --- | --- | --- | --- | --- | --- | --- | --- | --- | --- | --- | --- | --- | --- | --- | --- |
| 26 | 1.1.4 | **Conduct Market Analysis** |  | 137.75d | 2024-10-21 | 2025-02-04 | 19 |  |  | 2024-10-14 | 2025-01-26 | 137.75d | 0.88d | 0d |  | 3182h | 159,100 | 159,100 |
| 27 | 1.1.4.1 | Study Competitors |  | 2w | 2024-10-21 | 2024-11-02 |  |  |  | 2024-10-14 | 2024-10-26 | 2w | 1.1d | 0d | Business Analyst 1; Business Analyst 2; Business Analyst 3 | 284h | 14,200 | 14,200 |
| 28 | 1.1.4.2 | Discuss Unique Selling Points (USPs) |  | 5w | 2024-11-02 | 2024-11-27 | 27 |  |  | 2024-10-26 | 2024-11-20 | 5w | 1.1d | 0d | Business Analyst 1; Business Analyst 2; Business Analyst 3 | 753h | 37,650 | 37,650 |
| 29 | 1.1.4.3 | **Review Market Research** |  | 88.12d | 2024-11-27 | 2025-02-04 |  |  |  | 2024-11-20 | 2025-01-26 | 88.12d | 0.88d |  |  | 2145h | 107,250 | 107,250 |
| 30 | 1.1.4.3.1 | Gather Relevant Market Data |  | 5w | 2024-11-27 | 2024-12-22 | 28 |  |  | 2024-11-20 | 2024-12-15 | 5w | 1.1d | 0d | Business Analyst 1; Business Analyst 2; Business Analyst 3 | 736h | 36,800 | 36,800 |
| 31 | 1.1.4.3.2 | Analyze Market Trends |  | 3.11w | 2024-12-22 | 2025-01-06 | 30 |  |  | 2024-12-15 | 2024-12-29 | 2.95w | 0.88d | 0d | Business Analyst 1; Business Analyst 2; Business Analyst 3 | 466h | 23,300 | 23,300 |
| 32 | 1.1.4.3.3 | Summarize Key Findings |  | 6.16w | 2025-01-06 | 2025-02-04 | 31 |  |  | 2024-12-29 | 2025-01-26 | 6w | 0.88d |  | Business Analyst 1; Business Analyst 2; Business Analyst 3 | 943h | 47,150 | 47,150 |
| 33 | 1.1.5 | **Form Restaurant Partner Agreements** |  | 95.75d | 2025-02-04 | 2025-04-19 | 26 |  |  | 2025-01-26 | 2025-04-10 | 97.88d | 0d |  |  | 4251h | 354,810 | 354,810 |
| 34 | 1.1.5.1 | Sign Memorandums Of Understanding (MOUs) |  | 4.25w | 2025-02-04 | 2025-03-03 |  |  |  | 2025-01-26 | 2025-02-22 | 4.04w | 0.88d | 0d | Business Analyst 1; Business Analyst 2; Business Analyst 3; Lawyer 1; Lawyer 2; Lawyer 3; Project Manager | 766h | 76,500 | 76,500 |
| 35 | 1.1.5.2 | Conduct Agreement Negotiations |  | 5.06w | 2025-03-03 | 2025-04-02 | 34 |  |  | 2025-02-22 | 2025-03-24 | 5.06w | 0.88d | 0d | Business Analyst 1; Business Analyst 2; Business Analyst 3; Lawyer 1; Lawyer 2; Lawyer 3; Project Manager | 1875h | 162,170 | 162,170 |
| 36 | 1.1.5.3 | Create Service Level Agreements (SLAs) |  | 5w | 2025-04-02 | 2025-04-19 | 35 |  |  | 2025-03-24 | 2025-04-10 | 5w | 0d |  | Business Analyst 1; Business Analyst 2; Business Analyst 3; Lawyer 1; Lawyer 2; Lawyer 3; Project Manager | 1610h | 116,140 | 116,140 |
| 37 | 1.1.6 | Finish Phase | milestone | 1w | 2025-04-17 A | 2025-04-26 | 33 | 1% | 0.99w | 2025-04-10 | 2025-04-17 | 1w | 0d |  |  |  |  |  |
